# escms

Schedule from MS Project, 2013-06-02 to 2013-12-05, A marks actual dates.

## Calendars

- Standard: Mon-Fri 08:00-12:00, 13:00-17:00; Sat-Sun off.

## Resources

| Resource |
| --- |
| Susmita |
| Dipanwita |
| Anirban |
| Sangita |
| Shovan |
| Pabitra |
| Koushik |
| Ujjal |

## Schedule

| ID | Task | Duration | Start | Finish | Predecessors | Complete | Remaining | Total slack | Free slack | Constraint | Resources | Work | Actual work |
| --- | --- | --- | --- | --- | --- | --- | --- | --- | --- | --- | --- | --- | --- |
| 1 | Fitness Tracker Android Client | 23d | 2013-06-02 A | 2013-07-03 |  | 13% | 20d | 0d |  | start no earlier than 2013-05-01 | Ujjal | 184h | 24h |
| 2 | Fitness Tracker Controller | 20d | 2013-07-04 | 2013-07-31 | 1 |  |  | 0d |  |  | Ujjal | 160h |  |
| 3 | Exercise Chart Management System | 20d | 2013-08-01 | 2013-08-28 | 2 |  |  | 0d |  |  | Ujjal | 160h |  |
| 4 | User Management system | 15d | 2013-08-29 | 2013-09-18 | 3 |  |  | 0d |  |  | Ujjal | 120h |  |
| 5 | Food Chart Management System | 23d | 2013-11-04 | 2013-12-05 | 13 |  |  | 0d |  |  | Ujjal | 184h |  |
| 6 | Exercise Tracker | 20d | 2013-06-24 | 2013-07-19 |  |  |  | 64d | 0d | start no earlier than 2013-06-24 | Ujjal | 160h |  |
| 7 | Food Tracker | 10d | 2013-07-22 | 2013-08-02 | 6 |  |  | 64d | 0d |  | Ujjal | 80h |  |
| 8 | Weight Tracker | 17.5d | 2013-08-05 | 2013-08-28 | 7 |  |  | 64d |  |  | Ujjal | 140h |  |
| 9 | Web Sync Handler | 36d | 2013-08-23 | 2013-10-11 |  |  |  | 31.5d |  | start no earlier than 2013-08-23 | Ujjal | 288h |  |
| 10 | Web Viewer Client | 27d | 2013-08-15 | 2013-09-20 |  |  |  | 46.5d |  | start no earlier than 2013-08-15 | Ujjal | 216h |  |
| 11 | Fitness Tracker Database | 10d | 2013-09-19 | 2013-10-02 | 4 |  |  | 0d |  | start no earlier than 2012-12-18 | Ujjal | 80h |  |
| 12 | Integration | 10d | 2013-10-03 | 2013-10-16 | 1, 4, 11, 2, 3 |  |  | 0d |  | start no earlier than 2012-12-28 | Ujjal | 80h |  |
| 13 | Integration Testing | 12.5d | 2013-10-17 | 2013-11-04 | 1, 4, 11, 12, 2, 3 |  |  | 0d |  | start no earlier than 2013-01-11 | Ujjal | 100h |  |
| 14 | Bug Fix | 21d | 2013-10-25 | 2013-11-22 |  |  |  | 8.5d |  | start no earlier than 2013-10-25 | Ujjal | 168h |  |
| 15 | Documentation | 25d | 2013-09-30 | 2013-11-01 |  |  |  | 16.5d |  | start no earlier than 2013-09-30 | Ujjal | 200h |  |
